# Cronograma

Schedule from MS Project, 2018-04-10 to 2018-06-06, costs in $, A marks actual dates.

## Calendars

- Standard: Mon-Fri 08:00-12:00, 13:00-17:00; Sat-Sun off.

## Resources

| Resource | Rate | Cost per use |
| --- | --- | --- |
| Ana Caroline Costa Passos | 100 | 100 |
| Eduardo Faggiani | 50 | 50 |
| Gabriel Oraboni Carvalho | 50 | 50 |
| Renam Makoto Aono | 50 | 50 |
| Vinícius de Oliveira Souza | 50 | 50 |
| Cliente |  |  |

## Schedule

| ID | WBS | Task | Type | Duration | Start | Finish | Predecessors | Complete | Remaining | Total slack | Free slack | Resources | Work | Actual work | Cost | Actual cost |
| --- | --- | --- | --- | --- | --- | --- | --- | --- | --- | --- | --- | --- | --- | --- | --- | --- |
| 1 | 1 | **SuperMaps** |  | 41.62d | 2018-04-10 08:00 A | 2018-06-06 13:56 |  | 2% | 40.64d | 0d |  |  | 228.44h | 4h | 16,472 | 700 |
| 2 | 1.1 | **Prospecção** |  | 1.62d | 2018-04-10 08:00 A | 2018-04-11 14:00 |  |  | 1.62d | 0d |  |  | 13h |  | 1,200 | 150 |
| 3 | 1.1.1 | Reunião com o Cliente |  | 5h | 2018-04-10 08:00 A | 2018-04-10 14:00 |  |  | 5h | 0d |  | Eduardo Faggiani | 5h |  | 300 | 50 |
| 4 | 1.1.2 | Redigir Ata de Reunião |  | 8h | 2018-04-10 10:00 A | 2018-04-11 14:00 | 3 |  | 8h | -1.12d | 0d | Ana Caroline Costa Passos | 8h |  | 900 | 100 |
| 5 | 1.2 | **Análise** |  | 0.25d | 2018-04-10 13:00 A | 2018-04-10 15:00 A | 4 | 100% |  |  |  |  |  |  | 100 | 100 |
| 6 | 1.2.1 | Redigir Documento de Requisitos | milestone | 0h | 2018-04-10 13:00 A | 2018-04-10 13:00 A | 4 | 100% |  |  |  | Renam Makoto Aono |  |  | 50 | 50 |
| 7 | 1.2.2 | Revisar Documento de Requisitos | milestone | 0h | 2018-04-10 14:00 A | 2018-04-10 14:00 A | 6 | 100% |  |  |  | Gabriel Oraboni Carvalho |  |  | 50 | 50 |
| 8 | 1.2.3 | Aprovação do Cliente | milestone | 0h | 2018-04-10 15:00 A | 2018-04-10 15:00 A | 7 | 100% |  |  |  | Cliente |  |  |  |  |
| 9 | 1.3 | **Planejamento** |  | 0.62d | 2018-04-11 08:00 A | 2018-04-11 14:00 A | 8 | 100% |  |  |  |  | 4h | 4h | 450 | 450 |
| 10 | 1.3.1 | Reunir com a Equipe |  | 1h | 2018-04-11 08:00 A | 2018-04-11 09:00 A | 8 | 100% |  |  |  | Ana Caroline Costa Passos | 1h | 1h | 200 | 200 |
| 11 | 1.3.2 | Redigir Plano de Projeto |  | 2h | 2018-04-11 08:00 A | 2018-04-11 10:00 A | 8 | 100% |  |  |  | Eduardo Faggiani | 2h | 2h | 150 | 150 |
| 12 | 1.3.3 | Redigir EAP |  | 1h | 2018-04-11 13:00 A | 2018-04-11 14:00 A | 11 | 100% |  |  |  | Gabriel Oraboni Carvalho | 1h | 1h | 100 | 100 |
| 13 | 1.4 | **Desenvolvimento** |  | 9.56d | 2018-05-21 15:00 | 2018-06-04 10:30 | 12FS+225h |  |  | 0d |  |  | 193h |  | 13,750 |  |
| 14 | 1.4.1 | **Release 1** |  | 2.12d | 2018-05-21 15:00 | 2018-05-23 16:00 | 12 |  |  | 0d |  |  | 43h |  | 3,200 |  |
| 15 | 1.4.1.1 | Implementar [RF01] Importar Banco de Dados do Supermercado |  | 8h | 2018-05-21 15:00 | 2018-05-22 15:00 | 12 |  |  | 1.12d |  | Ana Caroline Costa Passos | 8h |  | 900 |  |
| 16 | 1.4.1.2 | Implementar [RF02] Cadastrar Mapa |  | 10h | 2018-05-21 15:00 | 2018-05-22 17:00 | 12 |  |  | 0d |  | Eduardo Faggiani; Renam Makoto Aono | 20h |  | 1,100 |  |
| 17 | 1.4.1.3 | Implementar [RF03] Editar Mapa |  | 5h | 2018-05-23 08:00 | 2018-05-23 14:00 | 16 |  |  | 0.25d |  | Ana Caroline Costa Passos | 5h |  | 600 |  |
| 18 | 1.4.1.4 | Implementar [RF04] Remover Mapa |  | 3h | 2018-05-23 08:00 | 2018-05-23 11:00 | 16 |  |  | 0.5d |  | Vinícius de Oliveira Souza | 3h |  | 200 |  |
| 19 | 1.4.1.5 | Implementar [RF05] Consultar Mapa |  | 7h | 2018-05-23 08:00 | 2018-05-23 16:00 | 16 |  |  | 0d |  | Gabriel Oraboni Carvalho | 7h |  | 400 |  |
| 20 | 1.4.2 | **Release 2** |  | 2.25d | 2018-05-23 16:00 | 2018-05-28 09:00 | 14 |  |  | 0d |  |  | 44h |  | 3,450 |  |
| 21 | 1.4.2.1 | Implementar [RF06] Cadastrar Prateleira |  | 8h | 2018-05-23 16:00 | 2018-05-24 16:00 | 16 |  |  | 0d |  | Ana Caroline Costa Passos | 8h |  | 900 |  |
| 22 | 1.4.2.2 | Implementar [RF07] Editar Prateleira |  | 7h | 2018-05-24 16:00 | 2018-05-25 15:00 | 21 |  |  | 0.38d |  | Vinícius de Oliveira Souza | 7h |  | 400 |  |
| 23 | 1.4.2.3 | Implementar [RF08] Consultar Prateleira |  | 5h | 2018-05-24 16:00 | 2018-05-25 12:00 | 21 |  |  | 0.62d |  | Renam Makoto Aono | 5h |  | 300 |  |
| 24 | 1.4.2.4 | Implementar [RF09] Remover Prateleira |  | 5h | 2018-05-24 16:00 | 2018-05-25 12:00 | 21 |  |  | 0.62d |  | Eduardo Faggiani | 5h |  | 300 |  |
| 25 | 1.4.2.5 | Implementar [RF10] Inserir Prateleira no Mapa |  | 10h | 2018-05-24 16:00 | 2018-05-28 09:00 | 21 |  |  | 0d |  | Gabriel Oraboni Carvalho | 10h |  | 550 |  |
| 26 | 1.4.2.6 | Implementar [RF11] Inserir Produtos na Prateleira |  | 9h | 2018-05-24 16:00 | 2018-05-25 17:00 | 21 |  |  | 0.12d |  | Ana Caroline Costa Passos | 9h |  | 1,000 |  |

| ID | WBS | Task | Duration | Start | Finish | Predecessors | Total slack | Resources | Work | Cost |
| --- | --- | --- | --- | --- | --- | --- | --- | --- | --- | --- |
| 27 | 1.4.3 | **Release 3** | 2.75d | 2018-05-28 09:00 | 2018-05-30 16:00 | 20 | 0d |  | 57h | 4,000 |
| 28 | 1.4.3.1 | Implementar [RF12] Remover Produto na Prateleira | 5h | 2018-05-28 09:00 | 2018-05-28 15:00 | 26 | 0d | Ana Caroline Costa Passos | 5h | 600 |
| 29 | 1.4.3.2 | Implementar [RF13] Atualizar Produto na Prateleira | 5h | 2018-05-28 09:00 | 2018-05-28 15:00 | 26 | 0d | Vinícius de Oliveira Souza | 5h | 300 |
| 30 | 1.4.3.3 | Implementar [RF14] Consultar Produto | 5h | 2018-05-28 09:00 | 2018-05-28 15:00 | 26 | 0d | Renam Makoto Aono | 5h | 300 |
| 31 | 1.4.3.4 | Implementar [RF15] Localizar Produto no Supermercado | 9h | 2018-05-28 15:00 | 2018-05-29 16:00 | 26, 28, 29, 30 | 0d | Eduardo Faggiani; Vinícius de Oliveira Souza | 18h | 1,000 |
| 32 | 1.4.3.5 | Implementar [RF16] Calcular menor caminho para compras | 8h | 2018-05-29 16:00 | 2018-05-30 16:00 | 31 | 0d | Gabriel Oraboni Carvalho; Ana Caroline Costa Passos; Eduardo Faggiani | 24h | 1,800 |
| 33 | 1.4.4 | **Release 4** | 2.44d | 2018-05-30 16:00 | 2018-06-04 10:30 | 32 | 0d |  | 49h | 3,100 |
| 34 | 1.4.4.1 | Implementar [RF17] Emissão do menor caminho | 10h | 2018-05-30 16:00 | 2018-06-01 09:00 | 32 | 0d | Eduardo Faggiani; Vinícius de Oliveira Souza | 20h | 1,100 |
| 35 | 1.4.4.2 | Implementar [RF18] Ranking de Produtos | 6h | 2018-05-30 16:00 | 2018-05-31 14:00 | 31 | 3.99d | Renam Makoto Aono; Ana Caroline Costa Passos | 12h | 1,050 |
| 36 | 1.4.4.3 | Implementar [RF19] Relatório de itens mais visitados no supermercado | 9.5h | 2018-06-01 09:00 | 2018-06-04 10:30 | 34 | 0d | Gabriel Oraboni Carvalho; Eduardo Faggiani | 17h | 950 |
| 37 | 1.5 | **Fechamento** | 2.31d | 2018-06-04 10:30 | 2018-06-06 13:56 | 36 | 0d |  | 18.44h | 972 |
| 38 | 1.5.1 | Documento de Aprovação do Cliente | 18.44h | 2018-06-04 10:30 | 2018-06-06 13:56 | 36 | 0d | Vinícius de Oliveira Souza | 18.44h | 972 |
